# Цех 2

Schedule from a web Gantt chart, 2024-02-06 to 2024-12-20.

## Schedule

| ID | WBS | Task | Duration | Start | Finish | Predecessors | Complete | Status |
| --- | --- | --- | --- | --- | --- | --- | --- | --- |
| 2 | 1 | **5000M** | 39d | 2024-04-08 | 2024-05-30 |  | 100% | done |
| 3 | 1.1 | 10. Передняя поворотная камера | 7d | 2024-04-08 | 2024-04-16 |  | 100% | done |
| 4 | 1.2 | 20. Топочная камера | 4d | 2024-04-10 | 2024-04-15 |  | 100% | done |
| 5 | 1.3 | 30. Сборка корпуса | 3d | 2024-04-17 | 2024-04-19 | 3 | 100% | done |
| 6 | 1.4 | 40. Сборка двери | 2d | 2024-04-17 | 2024-04-18 |  | 100% | done |
| 7 | 1.5 | 60. Сборка котла | 18d | 2024-04-22 | 2024-05-15 | 5 | 100% | done |
| 8 | 1.6 | 70. Установка дымогарника, бандажей. | 11d | 2024-05-16 | 2024-05-30 | 7 | 100% | done |
| 9 | 2 | **20SV191\13** | 83d | 2024-02-06 | 2024-05-30 |  | 100% | done |
| 10 | 2.1 | 10. Передняя поворотная камера | 15d | 2024-02-06 | 2024-02-26 |  | 100% | done |
| 11 | 2.2 | 20. Топочная камера | 9d | 2024-02-12 | 2024-02-22 |  | 100% | done |
| 12 | 2.3 | 30. Сборка корпуса | 7d | 2024-02-27 | 2024-03-06 | 10 | 100% | done |
| 13 | 2.4 | 40. Сборка двери | 5d | 2024-02-27 | 2024-03-04 |  | 100% | done |
| 14 | 2.5 | 60. Сборка котла | 37d | 2024-03-07 | 2024-04-26 | 12 | 100% | done |
| 15 | 2.6 | 70. Установка дымогарника, бандажей. | 24d | 2024-04-29 | 2024-05-30 | 14 | 100% | done |
| 16 | 3 | **5SV191\13** | 37d | 2024-04-22 | 2024-06-11 |  | 85% | failed |
| 17 | 3.1 | 10. Передняя поворотная камера | 7d | 2024-04-22 | 2024-04-30 |  | 100% | done |
| 18 | 3.2 | 20. Топочная камера | 4d | 2024-04-23 | 2024-04-26 |  | 100% | done |
| 19 | 3.3 | 30. Сборка корпуса | 3d | 2024-05-01 | 2024-05-03 | 17 | 100% | done |
| 20 | 3.4 | 40. Сборка двери | 2d | 2024-05-02 | 2024-05-03 |  | 100% | done |
| 21 | 3.5 | 60. Сборка котла | 17d | 2024-05-06 | 2024-05-28 | 19 | 100% | done |
| 22 | 3.6 | 70. Установка дымогарника, бандажей. | 10d | 2024-05-29 | 2024-06-11 | 21 | 45% | failed |
| 23 | 4 | **10OV220-40\22** | 54d | 2024-04-03 | 2024-06-17 |  | 83% | failed |
| 24 | 4.1 | 10. Передняя поворотная камера | 10d | 2024-04-03 | 2024-04-16 |  | 100% | done |
| 25 | 4.2 | 20. Топочная камера | 6d | 2024-04-08 | 2024-04-15 |  | 100% | done |
| 26 | 4.3 | 30. Сборка корпуса | 4d | 2024-04-17 | 2024-04-22 | 24 | 100% | done |
| 27 | 4.4 | 40. Сборка двери | 3d | 2024-04-17 | 2024-04-19 |  | 100% | done |
| 28 | 4.5 | 60. Сборка котла | 25d | 2024-04-23 | 2024-05-27 | 26 | 100% | done |
| 29 | 4.6 | 70. Установка дымогарника, бандажей. | 15d | 2024-05-28 | 2024-06-17 | 28 | 40% | failed |

| ID | WBS | Task | Duration | Start | Finish | Predecessors | Complete | Status |
| --- | --- | --- | --- | --- | --- | --- | --- | --- |
| 30 | 5 | **25\15ДА** | 22d | 2024-05-23 | 2024-06-21 |  | 38% | failed |
| 31 | 5.1 | 10. Передняя поворотная камера | 4d | 2024-05-23 | 2024-05-28 |  | 100% | done |
| 32 | 5.2 | 20. Топочная камера | 2d | 2024-05-24 | 2024-05-27 |  | 100% | done |
| 33 | 5.3 | 30. Сборка корпуса | 2d | 2024-05-29 | 2024-05-30 | 31 | 100% | done |
| 34 | 5.4 | 40. Сборка двери | 1d | 2024-05-30 | 2024-05-30 |  | 100% | done |
| 35 | 5.5 | 60. Сборка котла | 10d | 2024-05-31 | 2024-06-13 | 33 | 25% | failed |
| 36 | 5.6 | 70. Установка дымогарника, бандажей. | 6d | 2024-06-14 | 2024-06-21 | 35 |  | failed |
| 37 | 6 | **10OV220-40\22** | 54d | 2024-04-05 | 2024-06-19 |  | 79% | failed |
| 38 | 6.1 | 10. Передняя поворотная камера | 10d | 2024-04-05 | 2024-04-18 |  | 100% | done |
| 39 | 6.2 | 20. Топочная камера | 6d | 2024-04-10 | 2024-04-17 |  | 100% | done |
| 40 | 6.3 | 30. Сборка корпуса | 4d | 2024-04-19 | 2024-04-24 | 38 | 100% | done |
| 41 | 6.4 | 40. Сборка двери | 3d | 2024-04-19 | 2024-04-23 |  | 100% | done |
| 42 | 6.5 | 60. Сборка котла | 25d | 2024-04-25 | 2024-05-29 | 40 | 100% | done |
| 43 | 6.6 | 70. Установка дымогарника, бандажей. | 15d | 2024-05-30 | 2024-06-19 | 42 | 25% | failed |
| 44 | 7 | **7SE** | 39d | 2024-05-01 | 2024-06-24 |  | 60% | failed |
| 45 | 7.1 | 10. Передняя поворотная камера | 7d | 2024-05-01 | 2024-05-09 |  | 100% | done |
| 46 | 7.2 | 20. Топочная камера | 4d | 2024-05-06 | 2024-05-09 |  | 100% | done |
| 47 | 7.3 | 30. Сборка корпуса | 3d | 2024-05-10 | 2024-05-14 | 45 | 100% | done |
| 48 | 7.4 | 40. Сборка двери | 2d | 2024-05-10 | 2024-05-13 |  | 100% | done |
| 49 | 7.5 | 60. Сборка котла | 18d | 2024-05-15 | 2024-06-07 | 47 | 79% | failed |
| 50 | 7.6 | 70. Установка дымогарника, бандажей. | 11d | 2024-06-10 | 2024-06-24 | 49 |  | failed |
| 51 | 8 | **7SE** | 39d | 2024-05-01 | 2024-06-24 |  | 60% | failed |
| 52 | 8.1 | 10. Передняя поворотная камера | 7d | 2024-05-01 | 2024-05-09 |  | 100% | done |
| 53 | 8.2 | 20. Топочная камера | 4d | 2024-05-01 | 2024-05-06 |  | 100% | done |
| 54 | 8.3 | 30. Сборка корпуса | 3d | 2024-05-10 | 2024-05-14 | 52 | 100% | done |
| 55 | 8.4 | 40. Сборка двери | 2d | 2024-05-10 | 2024-05-13 |  | 100% | done |
| 56 | 8.5 | 60. Сборка котла | 18d | 2024-05-15 | 2024-06-07 | 54 | 80% | failed |
| 57 | 8.6 | 70. Установка дымогарника, бандажей. | 11d | 2024-06-10 | 2024-06-24 | 56 |  | failed |

| ID | WBS | Task | Duration | Start | Finish | Predecessors | Complete | Status |
| --- | --- | --- | --- | --- | --- | --- | --- | --- |
| 58 | 9 | **10SV18** | 56d | 2024-04-09 | 2024-06-25 |  | 72% | failed |
| 59 | 9.1 | 10. Передняя поворотная камера | 10d | 2024-04-09 | 2024-04-22 |  | 100% | done |
| 60 | 9.2 | 20. Топочная камера | 6d | 2024-04-09 | 2024-04-16 |  | 100% | done |
| 61 | 9.3 | 30. Сборка корпуса | 5d | 2024-04-23 | 2024-04-29 | 59 | 100% | done |
| 62 | 9.4 | 40. Сборка двери | 3d | 2024-04-24 | 2024-04-26 |  | 100% | done |
| 63 | 9.5 | 60. Сборка котла | 25d | 2024-04-30 | 2024-06-03 | 61 | 100% | failed |
| 64 | 9.6 | 70. Установка дымогарника, бандажей. | 16d | 2024-06-04 | 2024-06-25 | 63 |  | failed |
| 65 | 10 | **4SV180\10** | 34d | 2024-05-08 | 2024-06-24 |  | 56% | failed |
| 66 | 10.1 | 10. Передняя поворотная камера | 6d | 2024-05-08 | 2024-05-15 |  | 100% | done |
| 67 | 10.2 | 20. Топочная камера | 4d | 2024-05-09 | 2024-05-14 |  | 100% | done |
| 68 | 10.3 | 30. Сборка корпуса | 3d | 2024-05-16 | 2024-05-20 | 66 | 100% | done |
| 69 | 10.4 | 40. Сборка двери | 2d | 2024-05-16 | 2024-05-17 |  | 100% | done |
| 70 | 10.5 | 60. Сборка котла | 15d | 2024-05-21 | 2024-06-10 | 68 | 67% | failed |
| 71 | 10.6 | 70. Установка дымогарника, бандажей. | 10d | 2024-06-11 | 2024-06-24 | 70 |  | failed |
| 72 | 11 | **4SV180\10** | 34d | 2024-05-14 | 2024-06-28 |  | 46% | failed |
| 73 | 11.1 | 10. Передняя поворотная камера | 6d | 2024-05-14 | 2024-05-21 |  | 100% | done |
| 74 | 11.2 | 20. Топочная камера | 4d | 2024-05-15 | 2024-05-20 |  | 100% | done |
| 75 | 11.3 | 30. Сборка корпуса | 3d | 2024-05-22 | 2024-05-24 | 73 | 100% | done |
| 76 | 11.4 | 40. Сборка двери | 2d | 2024-05-22 | 2024-05-23 |  | 100% | done |
| 77 | 11.5 | 60. Сборка котла | 15d | 2024-05-27 | 2024-06-14 | 75 | 42% | failed |
| 78 | 11.6 | 70. Установка дымогарника, бандажей. | 10d | 2024-06-17 | 2024-06-28 | 77 |  | failed |
| 79 | 12 | **4SV180\10** | 34d | 2024-05-14 | 2024-06-28 |  | 45% | failed |
| 80 | 12.1 | 10. Передняя поворотная камера | 6d | 2024-05-14 | 2024-05-21 |  | 100% | done |
| 81 | 12.2 | 20. Топочная камера | 4d | 2024-05-16 | 2024-05-21 |  | 100% | done |
| 82 | 12.3 | 30. Сборка корпуса | 3d | 2024-05-22 | 2024-05-24 | 80 | 100% | done |
| 83 | 12.4 | 40. Сборка двери | 2d | 2024-05-22 | 2024-05-23 |  | 100% | done |
| 84 | 12.5 | 60. Сборка котла | 15d | 2024-05-27 | 2024-06-14 | 82 | 40% | failed |
| 85 | 12.6 | 70. Установка дымогарника, бандажей. | 10d | 2024-06-17 | 2024-06-28 | 84 |  | failed |

| ID | WBS | Task | Duration | Start | Finish | Predecessors | Complete | Status |
| --- | --- | --- | --- | --- | --- | --- | --- | --- |
| 86 | 13 | **22OV175-85\8** | 77d | 2024-03-19 | 2024-07-03 |  | 72% | failed |
| 87 | 13.1 | 10. Передняя поворотная камера | 14d | 2024-03-19 | 2024-04-05 |  | 100% | done |
| 88 | 13.2 | 20. Топочная камера | 8d | 2024-03-26 | 2024-04-04 |  | 100% | done |
| 89 | 13.3 | 30. Сборка корпуса | 6d | 2024-04-08 | 2024-04-15 | 87 | 100% | done |
| 90 | 13.4 | 40. Сборка двери | 5d | 2024-04-09 | 2024-04-15 |  | 100% | done |
| 91 | 13.5 | 60. Сборка котла | 35d | 2024-04-16 | 2024-06-03 | 89 | 100% | failed |
| 92 | 13.6 | 70. Установка дымогарника, бандажей. | 22d | 2024-06-04 | 2024-07-03 | 91 |  | failed |
| 93 | 14 | **22OV175-85\8** | 77d | 2024-03-28 | 2024-07-12 |  | 64% | failed |
| 94 | 14.1 | 10. Передняя поворотная камера | 14d | 2024-03-28 | 2024-04-16 |  | 100% | done |
| 95 | 14.2 | 20. Топочная камера | 8d | 2024-04-04 | 2024-04-15 |  | 100% | done |
| 96 | 14.3 | 30. Сборка корпуса | 6d | 2024-04-17 | 2024-04-24 | 94 | 100% | done |
| 97 | 14.4 | 40. Сборка двери | 5d | 2024-04-17 | 2024-04-23 |  | 100% | done |
| 98 | 14.5 | 60. Сборка котла | 35d | 2024-04-25 | 2024-06-12 | 96 | 83% | failed |
| 99 | 14.6 | 70. Установка дымогарника, бандажей. | 22d | 2024-06-13 | 2024-07-12 | 98 |  | failed |
| 100 | 15 | **3SE** | 34d | 2024-06-06 | 2024-07-23 |  |  | failed |
| 101 | 15.1 | 10. Передняя поворотная камера | 6d | 2024-06-06 | 2024-06-13 |  |  | failed |
| 102 | 15.2 | 20. Топочная камера | 4d | 2024-06-07 | 2024-06-12 |  |  | failed |
| 103 | 15.3 | 30. Сборка корпуса | 3d | 2024-06-14 | 2024-06-18 | 101 |  | failed |
| 104 | 15.4 | 40. Сборка двери | 2d | 2024-06-12 | 2024-06-13 |  |  | failed |
| 105 | 15.5 | 60. Сборка котла | 15d | 2024-06-19 | 2024-07-09 | 103 |  | failed |
| 106 | 15.6 | 70. Установка дымогарника, бандажей. | 10d | 2024-07-10 | 2024-07-23 | 105 |  | failed |
| 107 | 16 | **7SE** | 39d | 2024-06-06 | 2024-07-30 |  |  | failed |
| 108 | 16.1 | 10. Передняя поворотная камера | 7d | 2024-06-06 | 2024-06-14 |  |  | failed |
| 109 | 16.2 | 20. Топочная камера | 4d | 2024-06-10 | 2024-06-13 |  |  | failed |
| 110 | 16.3 | 30. Сборка корпуса | 3d | 2024-06-17 | 2024-06-19 | 108 |  | failed |
| 111 | 16.4 | 40. Сборка двери | 2d | 2024-06-17 | 2024-06-18 |  |  | failed |
| 112 | 16.5 | 60. Сборка котла | 18d | 2024-06-20 | 2024-07-15 | 110 |  | failed |
| 113 | 16.6 | 70. Установка дымогарника, бандажей. | 11d | 2024-07-16 | 2024-07-30 | 112 |  | failed |

| ID | WBS | Task | Duration | Start | Finish | Predecessors | Status |
| --- | --- | --- | --- | --- | --- | --- | --- |
| 114 | 17 | **7SE** | 39d | 2024-06-06 | 2024-07-30 |  | failed |
| 115 | 17.1 | 10. Передняя поворотная камера | 7d | 2024-06-06 | 2024-06-14 |  | failed |
| 116 | 17.2 | 20. Топочная камера | 4d | 2024-06-10 | 2024-06-13 |  | failed |
| 117 | 17.3 | 30. Сборка корпуса | 3d | 2024-06-17 | 2024-06-19 | 115 | failed |
| 118 | 17.4 | 40. Сборка двери | 2d | 2024-06-17 | 2024-06-18 |  | failed |
| 119 | 17.5 | 60. Сборка котла | 18d | 2024-06-20 | 2024-07-15 | 117 | failed |
| 120 | 17.6 | 70. Установка дымогарника, бандажей. | 11d | 2024-07-16 | 2024-07-30 | 119 | failed |
| 121 | 18 | **5SE** | 37d | 2024-06-06 | 2024-07-26 |  | failed |
| 122 | 18.1 | 10. Передняя поворотная камера | 7d | 2024-06-06 | 2024-06-14 |  | failed |
| 123 | 18.2 | 20. Топочная камера | 4d | 2024-06-07 | 2024-06-12 |  | failed |
| 124 | 18.3 | 30. Сборка корпуса | 3d | 2024-06-17 | 2024-06-19 | 122 | failed |
| 125 | 18.4 | 40. Сборка двери | 2d | 2024-06-17 | 2024-06-18 |  | failed |
| 126 | 18.5 | 60. Сборка котла | 17d | 2024-06-20 | 2024-07-12 | 124 | failed |
| 127 | 18.6 | 70. Установка дымогарника, бандажей. | 10d | 2024-07-15 | 2024-07-26 | 126 | failed |
| 128 | 19 | **5SE** | 37d | 2024-06-06 | 2024-07-26 |  | failed |
| 129 | 19.1 | 10. Передняя поворотная камера | 7d | 2024-06-06 | 2024-06-14 |  | failed |
| 130 | 19.2 | 20. Топочная камера | 4d | 2024-06-07 | 2024-06-12 |  | failed |
| 131 | 19.3 | 30. Сборка корпуса | 3d | 2024-06-17 | 2024-06-19 | 129 | failed |
| 132 | 19.4 | 40. Сборка двери | 2d | 2024-06-17 | 2024-06-18 |  | failed |
| 133 | 19.5 | 60. Сборка котла | 17d | 2024-06-20 | 2024-07-12 | 131 | failed |
| 134 | 19.6 | 70. Установка дымогарника, бандажей. | 10d | 2024-07-15 | 2024-07-26 | 133 | failed |
| 135 | 20 | **5SE** | 38d | 2024-06-06 | 2024-07-29 |  | failed |
| 136 | 20.1 | 10. Передняя поворотная камера | 7d | 2024-06-06 | 2024-06-14 |  | failed |
| 137 | 20.2 | 20. Топочная камера | 4d | 2024-06-06 | 2024-06-11 |  | failed |
| 138 | 20.3 | 30. Сборка корпуса | 3d | 2024-06-17 | 2024-06-19 | 136 | failed |
| 139 | 20.4 | 40. Сборка двери | 2d | 2024-06-18 | 2024-06-19 |  | failed |
| 140 | 20.5 | 60. Сборка котла | 17d | 2024-06-20 | 2024-07-12 | 138 | failed |
| 141 | 20.6 | 70. Установка дымогарника, бандажей. | 11d | 2024-07-15 | 2024-07-29 | 140 | failed |

| ID | WBS | Task | Duration | Start | Finish | Predecessors | Complete | Status |
| --- | --- | --- | --- | --- | --- | --- | --- | --- |
| 142 | 21 | **5SV180\10** | 38d | 2024-05-14 | 2024-07-04 |  | 41% | suspended |
| 143 | 21.1 | 10. Передняя поворотная камера | 7d | 2024-05-14 | 2024-05-22 |  | 100% | done |
| 144 | 21.2 | 20. Топочная камера | 4d | 2024-05-16 | 2024-05-21 |  | 100% | done |
| 145 | 21.3 | 30. Сборка корпуса | 3d | 2024-05-23 | 2024-05-27 | 143 | 100% | suspended |
| 146 | 21.4 | 40. Сборка двери | 2d | 2024-05-23 | 2024-05-24 |  | 100% | done |
| 147 | 21.5 | 60. Сборка котла | 17d | 2024-05-28 | 2024-06-19 | 145 | 33% | suspended |
| 148 | 21.6 | 70. Установка дымогарника, бандажей. | 11d | 2024-06-20 | 2024-07-04 | 147 |  | suspended |
| 149 | 22 | **15000M** | 67d | 2024-04-29 | 2024-07-30 |  | 40% | suspended |
| 150 | 22.1 | 10. Передняя поворотная камера | 12d | 2024-04-29 | 2024-05-14 |  | 100% | done |
| 151 | 22.2 | 20. Топочная камера | 7d | 2024-05-03 | 2024-05-13 |  | 100% | done |
| 152 | 22.3 | 30. Сборка корпуса | 5d | 2024-05-15 | 2024-05-21 | 150 | 100% | done |
| 153 | 22.4 | 40. Сборка двери | 4d | 2024-05-16 | 2024-05-21 |  | 100% | done |
| 154 | 22.5 | 60. Сборка котла | 30d | 2024-05-22 | 2024-07-02 | 152 | 30% | suspended |
| 155 | 22.6 | 70. Установка дымогарника, бандажей. | 20d | 2024-07-03 | 2024-07-30 | 154 |  | suspended |
| 156 | 23 | **25\15ДА** | 34d | 2024-06-06 | 2024-07-23 |  |  | suspended |
| 157 | 23.1 | 10 | 6d | 2024-06-06 | 2024-06-13 |  |  | suspended |
| 158 | 23.2 | 20 | 4d | 2024-06-06 | 2024-06-11 |  |  | suspended |
| 159 | 23.3 | 30 | 3d | 2024-06-14 | 2024-06-18 | 157 |  | suspended |
| 160 | 23.4 | 40 | 2d | 2024-06-17 | 2024-06-18 |  |  | suspended |
| 161 | 23.5 | 60 | 15d | 2024-06-19 | 2024-07-09 | 159 |  | suspended |
| 162 | 23.6 | 70 | 10d | 2024-07-10 | 2024-07-23 | 161 |  | suspended |
| 163 | 24 | **3SE** | 34d | 2024-06-06 | 2024-07-23 |  |  | suspended |
| 164 | 24.1 | 10 | 6d | 2024-06-06 | 2024-06-13 |  |  | suspended |
| 165 | 24.2 | 20 | 4d | 2024-06-06 | 2024-06-11 |  |  | suspended |
| 166 | 24.3 | 30 | 3d | 2024-06-14 | 2024-06-18 | 164 |  | suspended |
| 167 | 24.4 | 40 | 1d | 2024-06-17 | 2024-06-17 |  |  | suspended |
| 168 | 24.5 | 60 | 15d | 2024-06-19 | 2024-07-09 | 166 |  | suspended |
| 169 | 24.6 | 70 | 10d | 2024-07-10 | 2024-07-23 | 168 |  | suspended |

| ID | WBS | Task | Duration | Start | Finish | Predecessors | Status |
| --- | --- | --- | --- | --- | --- | --- | --- |
| 170 | 25 | **7000M** | 44d | 2024-06-06 | 2024-08-06 |  | suspended |
| 171 | 25.1 | 10 | 8d | 2024-06-06 | 2024-06-17 |  | suspended |
| 172 | 25.2 | 20 | 5d | 2024-06-07 | 2024-06-13 |  | suspended |
| 173 | 25.3 | 30 | 4d | 2024-06-18 | 2024-06-21 | 171 | suspended |
| 174 | 25.4 | 40 | 3d | 2024-06-18 | 2024-06-20 |  | suspended |
| 175 | 25.5 | 60 | 19d | 2024-06-24 | 2024-07-18 | 173 | suspended |
| 176 | 25.6 | 70 | 13d | 2024-07-19 | 2024-08-06 | 175 | suspended |
| 177 | 26 | **7000M** | 44d | 2024-06-06 | 2024-08-06 |  | suspended |
| 178 | 26.1 | 10 | 8d | 2024-06-06 | 2024-06-17 |  | suspended |
| 179 | 26.2 | 20 | 5d | 2024-06-07 | 2024-06-13 |  | suspended |
| 180 | 26.3 | 30 | 4d | 2024-06-18 | 2024-06-21 | 178 | suspended |
| 181 | 26.4 | 40 | 3d | 2024-06-19 | 2024-06-21 |  | suspended |
| 182 | 26.5 | 60 | 19d | 2024-06-24 | 2024-07-18 | 180 | suspended |
| 183 | 26.6 | 70 | 13d | 2024-07-19 | 2024-08-06 | 182 | suspended |
| 184 | 27 | **7000M** | 44d | 2024-06-06 | 2024-08-06 |  | suspended |
| 185 | 27.1 | 10 | 8d | 2024-06-06 | 2024-06-17 |  | suspended |
| 186 | 27.2 | 20 | 5d | 2024-06-07 | 2024-06-13 |  | suspended |
| 187 | 27.3 | 30 | 4d | 2024-06-18 | 2024-06-21 | 185 | suspended |
| 188 | 27.4 | 40 | 3d | 2024-06-18 | 2024-06-20 |  | suspended |
| 189 | 27.5 | 60 | 19d | 2024-06-24 | 2024-07-18 | 187 | suspended |
| 190 | 27.6 | 70 | 13d | 2024-07-19 | 2024-08-06 | 189 | suspended |
| 191 | 28 | **4SE** | 34d | 2024-06-13 | 2024-07-30 |  |  |
| 192 | 28.1 | 10 | 6d | 2024-06-13 | 2024-06-20 |  |  |
| 193 | 28.2 | 20 | 4d | 2024-06-14 | 2024-06-19 |  |  |
| 194 | 28.3 | 30 | 3d | 2024-06-21 | 2024-06-25 | 192 | suspended |
| 195 | 28.4 | 40 | 2d | 2024-06-21 | 2024-06-24 |  |  |
| 196 | 28.5 | 60 | 15d | 2024-06-26 | 2024-07-16 | 194 | suspended |
| 197 | 28.6 | 70 | 10d | 2024-07-17 | 2024-07-30 | 196 | suspended |

| ID | WBS | Task | Duration | Start | Finish | Predecessors | Status |
| --- | --- | --- | --- | --- | --- | --- | --- |
| 198 | 29 | **4SE** | 34d | 2024-06-13 | 2024-07-30 |  |  |
| 199 | 29.1 | 10 | 6d | 2024-06-13 | 2024-06-20 |  |  |
| 200 | 29.2 | 20 | 4d | 2024-06-14 | 2024-06-19 |  |  |
| 201 | 29.3 | 30 | 3d | 2024-06-21 | 2024-06-25 | 199 | suspended |
| 202 | 29.4 | 40 | 2d | 2024-06-21 | 2024-06-24 |  |  |
| 203 | 29.5 | 60 | 15d | 2024-06-26 | 2024-07-16 | 201 | suspended |
| 204 | 29.6 | 70 | 10d | 2024-07-17 | 2024-07-30 | 203 | suspended |
| 205 | 30 | **4SE** | 34d | 2024-07-12 | 2024-08-28 |  |  |
| 206 | 30.1 | 10 | 6d | 2024-07-12 | 2024-07-19 |  |  |
| 207 | 30.2 | 20 | 4d | 2024-07-12 | 2024-07-17 |  |  |
| 208 | 30.3 | 30 | 3d | 2024-07-22 | 2024-07-24 | 206 | waiting |
| 209 | 30.4 | 40 | 2d | 2024-07-12 | 2024-07-15 |  |  |
| 210 | 30.5 | 60 | 15d | 2024-07-25 | 2024-08-14 | 208 | waiting |
| 211 | 30.6 | 70 | 10d | 2024-08-15 | 2024-08-28 | 210 | waiting |
| 212 | 31 | **6SE** | 38d | 2024-07-10 | 2024-08-30 |  |  |
| 213 | 31.1 | 10 | 7d | 2024-07-10 | 2024-07-18 |  |  |
| 214 | 31.2 | 20 | 4d | 2024-07-10 | 2024-07-15 |  |  |
| 215 | 31.3 | 30 | 3d | 2024-07-19 | 2024-07-23 | 213 | waiting |
| 216 | 31.4 | 40 | 2d | 2024-07-10 | 2024-07-11 |  |  |
| 217 | 31.5 | 60 | 17d | 2024-07-24 | 2024-08-15 | 215 | waiting |
| 218 | 31.6 | 70 | 11d | 2024-08-16 | 2024-08-30 | 217 | waiting |
| 219 | 32 | **6SE** | 38d | 2024-07-10 | 2024-08-30 |  |  |
| 220 | 32.1 | 10 | 7d | 2024-07-10 | 2024-07-18 |  |  |
| 221 | 32.2 | 20 | 4d | 2024-07-10 | 2024-07-15 |  |  |
| 222 | 32.3 | 30 | 3d | 2024-07-19 | 2024-07-23 | 220 | waiting |
| 223 | 32.4 | 40 | 2d | 2024-07-10 | 2024-07-11 |  |  |
| 224 | 32.5 | 60 | 17d | 2024-07-24 | 2024-08-15 | 222 | waiting |
| 225 | 32.6 | 70 | 11d | 2024-08-16 | 2024-08-30 | 224 | waiting |

| ID | WBS | Task | Duration | Start | Finish | Predecessors | Status |
| --- | --- | --- | --- | --- | --- | --- | --- |
| 226 | 33 | **6000M** | 41d | 2024-07-19 | 2024-09-13 |  |  |
| 227 | 33.1 | 10 | 7d | 2024-07-19 | 2024-07-29 |  |  |
| 228 | 33.2 | 20 | 5d | 2024-07-19 | 2024-07-25 |  |  |
| 229 | 33.3 | 30 | 3d | 2024-07-30 | 2024-08-01 | 227 | waiting |
| 230 | 33.4 | 40 | 2d | 2024-07-19 | 2024-07-22 |  |  |
| 231 | 33.5 | 60 | 19d | 2024-08-02 | 2024-08-28 | 229 | waiting |
| 232 | 33.6 | 70 | 12d | 2024-08-29 | 2024-09-13 | 231 | waiting |
| 233 | 34 | **7SV 6** | 39d | 2024-07-24 | 2024-09-16 |  |  |
| 234 | 34.1 | 10 | 7d | 2024-07-24 | 2024-08-01 |  |  |
| 235 | 34.2 | 20 | 4d | 2024-07-24 | 2024-07-29 |  |  |
| 236 | 34.3 | 30 | 3d | 2024-08-02 | 2024-08-06 | 234 | waiting |
| 237 | 34.4 | 40 | 2d | 2024-07-24 | 2024-07-25 |  |  |
| 238 | 34.5 | 60 | 18d | 2024-08-07 | 2024-08-30 | 236 | waiting |
| 239 | 34.6 | 70 | 11d | 2024-09-02 | 2024-09-16 | 238 | waiting |
| 240 | 35 | **7SV 6** | 39d | 2024-07-24 | 2024-09-16 |  |  |
| 241 | 35.1 | 10 | 7d | 2024-07-24 | 2024-08-01 |  |  |
| 242 | 35.2 | 20 | 4d | 2024-07-24 | 2024-07-29 |  |  |
| 243 | 35.3 | 30 | 3d | 2024-08-02 | 2024-08-06 | 241 | waiting |
| 244 | 35.4 | 40 | 2d | 2024-07-24 | 2024-07-25 |  |  |
| 245 | 35.5 | 60 | 18d | 2024-08-07 | 2024-08-30 | 243 | waiting |
| 246 | 35.6 | 70 | 11d | 2024-09-02 | 2024-09-16 | 245 | waiting |
| 247 | 36 | **4SE** | 34d | 2024-07-31 | 2024-09-16 |  |  |
| 248 | 36.1 | 10 | 6d | 2024-07-31 | 2024-08-07 |  |  |
| 249 | 36.2 | 20 | 4d | 2024-07-31 | 2024-08-05 |  |  |
| 250 | 36.3 | 30 | 3d | 2024-08-08 | 2024-08-12 | 248 | waiting |
| 251 | 36.4 | 40 | 2d | 2024-07-31 | 2024-08-01 |  |  |
| 252 | 36.5 | 60 | 15d | 2024-08-13 | 2024-09-02 | 250 | waiting |
| 253 | 36.6 | 70 | 10d | 2024-09-03 | 2024-09-16 | 252 | waiting |

| ID | WBS | Task | Duration | Start | Finish | Predecessors | Status |
| --- | --- | --- | --- | --- | --- | --- | --- |
| 254 | 37 | **4SE** | 34d | 2024-07-31 | 2024-09-16 |  |  |
| 255 | 37.1 | 10 | 6d | 2024-07-31 | 2024-08-07 |  |  |
| 256 | 37.2 | 20 | 4d | 2024-07-31 | 2024-08-05 |  |  |
| 257 | 37.3 | 30 | 3d | 2024-08-08 | 2024-08-12 | 255 | waiting |
| 258 | 37.4 | 40 | 2d | 2024-07-31 | 2024-08-01 |  |  |
| 259 | 37.5 | 60 | 15d | 2024-08-13 | 2024-09-02 | 257 | waiting |
| 260 | 37.6 | 70 | 10d | 2024-09-03 | 2024-09-16 | 259 | waiting |
| 261 | 38 | **8500P** | 47d | 2024-07-25 | 2024-09-27 |  |  |
| 262 | 38.1 | 10 | 8d | 2024-07-25 | 2024-08-05 |  |  |
| 263 | 38.2 | 20 | 5d | 2024-07-25 | 2024-07-31 |  |  |
| 264 | 38.3 | 30 | 4d | 2024-08-06 | 2024-08-09 | 262 | waiting |
| 265 | 38.4 | 40 | 3d | 2024-07-25 | 2024-07-29 |  |  |
| 266 | 38.5 | 60 | 21d | 2024-08-12 | 2024-09-09 | 264 | waiting |
| 267 | 38.6 | 70 | 14d | 2024-09-10 | 2024-09-27 | 266 | waiting |
| 268 | 39 | **8500P** | 47d | 2024-07-25 | 2024-09-27 |  |  |
| 269 | 39.1 | 10 | 8d | 2024-07-25 | 2024-08-05 |  |  |
| 270 | 39.2 | 20 | 5d | 2024-07-25 | 2024-07-31 |  |  |
| 271 | 39.3 | 30 | 4d | 2024-08-06 | 2024-08-09 | 269 | waiting |
| 272 | 39.4 | 40 | 3d | 2024-07-25 | 2024-07-29 |  |  |
| 273 | 39.5 | 60 | 21d | 2024-08-12 | 2024-09-09 | 271 | waiting |
| 274 | 39.6 | 70 | 14d | 2024-09-10 | 2024-09-27 | 273 | waiting |
| 275 | 40 | **16SW150\10 40** | 79d | 2024-06-11 | 2024-09-27 |  |  |
| 276 | 40.1 | 10 | 14d | 2024-06-11 | 2024-06-28 |  |  |
| 277 | 40.2 | 20 | 9d | 2024-06-11 | 2024-06-21 |  |  |
| 278 | 40.3 | 30 | 6d | 2024-07-01 | 2024-07-08 | 276 | waiting |
| 279 | 40.4 | 40 | 5d | 2024-06-11 | 2024-06-17 |  |  |
| 280 | 40.5 | 60 | 36d | 2024-07-09 | 2024-08-27 | 278 | waiting |
| 281 | 40.6 | 70 | 23d | 2024-08-28 | 2024-09-27 | 280 | waiting |

| ID | WBS | Task | Duration | Start | Finish | Predecessors | Status |
| --- | --- | --- | --- | --- | --- | --- | --- |
| 282 | 41 | **7SE** | 39d | 2024-08-22 | 2024-10-15 |  |  |
| 283 | 41.1 | 10 | 7d | 2024-08-22 | 2024-08-30 |  |  |
| 284 | 41.2 | 20 | 4d | 2024-08-22 | 2024-08-27 |  |  |
| 285 | 41.3 | 30 | 3d | 2024-09-02 | 2024-09-04 | 283 | waiting |
| 286 | 41.4 | 40 | 2d | 2024-08-22 | 2024-08-23 |  |  |
| 287 | 41.5 | 60 | 18d | 2024-09-05 | 2024-09-30 | 285 | waiting |
| 288 | 41.6 | 70 | 11d | 2024-10-01 | 2024-10-15 | 287 | waiting |
| 289 | 42 | **3SE** | 34d | 2024-09-02 | 2024-10-17 |  |  |
| 290 | 42.1 | 10 | 6d | 2024-09-02 | 2024-09-09 |  |  |
| 291 | 42.2 | 20 | 4d | 2024-09-02 | 2024-09-05 |  |  |
| 292 | 42.3 | 30 | 3d | 2024-09-10 | 2024-09-12 | 290 | waiting |
| 293 | 42.4 | 40 | 2d | 2024-09-10 | 2024-09-11 |  |  |
| 294 | 42.5 | 60 | 15d | 2024-09-13 | 2024-10-03 | 292 | waiting |
| 295 | 42.6 | 70 | 10d | 2024-10-04 | 2024-10-17 | 294 | waiting |
| 296 | 43 | **3SE** | 34d | 2024-09-02 | 2024-10-17 |  |  |
| 297 | 43.1 | 10 | 6d | 2024-09-02 | 2024-09-09 |  |  |
| 298 | 43.2 | 20 | 4d | 2024-09-02 | 2024-09-05 |  |  |
| 299 | 43.3 | 30 | 3d | 2024-09-10 | 2024-09-12 | 297 | waiting |
| 300 | 43.4 | 40 | 2d | 2024-09-02 | 2024-09-03 |  |  |
| 301 | 43.5 | 60 | 15d | 2024-09-13 | 2024-10-03 | 299 | waiting |
| 302 | 43.6 | 70 | 10d | 2024-10-04 | 2024-10-17 | 301 | waiting |
| 303 | 44 | **3SE** | 34d | 2024-09-06 | 2024-10-23 |  |  |
| 304 | 44.1 | 10 | 6d | 2024-09-06 | 2024-09-13 |  |  |
| 305 | 44.2 | 20 | 4d | 2024-09-06 | 2024-09-11 |  |  |
| 306 | 44.3 | 30 | 3d | 2024-09-16 | 2024-09-18 | 304 | waiting |
| 307 | 44.4 | 40 | 2d | 2024-09-06 | 2024-09-09 |  |  |
| 308 | 44.5 | 60 | 15d | 2024-09-19 | 2024-10-09 | 306 | waiting |
| 309 | 44.6 | 70 | 10d | 2024-10-10 | 2024-10-23 | 308 | waiting |

| ID | WBS | Task | Duration | Start | Finish | Predecessors | Status |
| --- | --- | --- | --- | --- | --- | --- | --- |
| 310 | 45 | **3SE** | 34d | 2024-10-14 | 2024-11-28 |  |  |
| 311 | 45.1 | 10 | 6d | 2024-10-14 | 2024-10-21 |  |  |
| 312 | 45.2 | 20 | 4d | 2024-10-14 | 2024-10-17 |  |  |
| 313 | 45.3 | 30 | 3d | 2024-10-22 | 2024-10-24 | 311 | suspended |
| 314 | 45.4 | 40 | 2d | 2024-10-22 | 2024-10-23 |  |  |
| 315 | 45.5 | 60 | 15d | 2024-10-25 | 2024-11-14 | 313 | suspended |
| 316 | 45.6 | 70 | 10d | 2024-11-15 | 2024-11-28 | 315 | suspended |
| 317 | 46 | **4SV185\12** | 34d | 2024-10-14 | 2024-11-28 |  |  |
| 318 | 46.1 | 10 | 6d | 2024-10-14 | 2024-10-21 |  |  |
| 319 | 46.2 | 20 | 4d | 2024-10-14 | 2024-10-17 |  |  |
| 320 | 46.3 | 30 | 3d | 2024-10-22 | 2024-10-24 | 318 | waiting |
| 321 | 46.4 | 40 | 2d | 2024-10-14 | 2024-10-15 |  |  |
| 322 | 46.5 | 60 | 15d | 2024-10-25 | 2024-11-14 | 320 | waiting |
| 323 | 46.6 | 70 | 10d | 2024-11-15 | 2024-11-28 | 322 | waiting |
| 324 | 47 | **8500P** | 47d | 2024-09-26 | 2024-11-29 |  |  |
| 325 | 47.1 | 10 | 8d | 2024-09-26 | 2024-10-07 |  |  |
| 326 | 47.2 | 20 | 5d | 2024-09-26 | 2024-10-02 |  |  |
| 327 | 47.3 | 30 | 4d | 2024-10-08 | 2024-10-11 | 325 | waiting |
| 328 | 47.4 | 40 | 3d | 2024-09-26 | 2024-09-30 |  |  |
| 329 | 47.5 | 60 | 21d | 2024-10-14 | 2024-11-11 | 327 | waiting |
| 330 | 47.6 | 70 | 14d | 2024-11-12 | 2024-11-29 | 329 | waiting |
| 331 | 48 | **8SV13** | 44d | 2024-10-07 | 2024-12-05 |  |  |
| 332 | 48.1 | 10 | 8d | 2024-10-07 | 2024-10-16 |  |  |
| 333 | 48.2 | 20 | 5d | 2024-10-07 | 2024-10-11 |  |  |
| 334 | 48.3 | 30 | 4d | 2024-10-17 | 2024-10-22 | 332 | waiting |
| 335 | 48.4 | 40 | 3d | 2024-10-07 | 2024-10-09 |  |  |
| 336 | 48.5 | 60 | 19d | 2024-10-23 | 2024-11-18 | 334 | waiting |
| 337 | 48.6 | 70 | 13d | 2024-11-19 | 2024-12-05 | 336 | waiting |

| ID | WBS | Task | Duration | Start | Finish | Predecessors | Status |
| --- | --- | --- | --- | --- | --- | --- | --- |
| 338 | 49 | **4SE** | 34d | 2024-10-21 | 2024-12-05 |  |  |
| 339 | 49.1 | 10 | 6d | 2024-10-21 | 2024-10-28 |  |  |
| 340 | 49.2 | 20 | 4d | 2024-10-21 | 2024-10-24 |  |  |
| 341 | 49.3 | 30 | 3d | 2024-10-29 | 2024-10-31 | 339 | waiting |
| 342 | 49.4 | 40 | 2d | 2024-10-21 | 2024-10-22 |  |  |
| 343 | 49.5 | 60 | 15d | 2024-11-01 | 2024-11-21 | 341 | waiting |
| 344 | 49.6 | 70 | 10d | 2024-11-22 | 2024-12-05 | 343 | waiting |
| 345 | 50 | **8500P** | 47d | 2024-10-17 | 2024-12-20 |  |  |
| 346 | 50.1 | 10 | 8d | 2024-10-17 | 2024-10-28 |  |  |
| 347 | 50.2 | 20 | 5d | 2024-10-17 | 2024-10-23 |  |  |
| 348 | 50.3 | 30 | 4d | 2024-10-29 | 2024-11-01 | 346 | waiting |
| 349 | 50.4 | 40 | 3d | 2024-10-17 | 2024-10-21 |  |  |
| 350 | 50.5 | 60 | 21d | 2024-11-04 | 2024-12-02 | 348 | waiting |
| 351 | 50.6 | 70 | 14d | 2024-12-03 | 2024-12-20 | 350 | waiting |
| 352 | 51 | **8500P** | 47d | 2024-10-17 | 2024-12-20 |  |  |
| 353 | 51.1 | 10 | 8d | 2024-10-17 | 2024-10-28 |  |  |
| 354 | 51.2 | 20 | 5d | 2024-10-17 | 2024-10-23 |  |  |
| 355 | 51.3 | 30 | 4d | 2024-10-29 | 2024-11-01 | 353 | waiting |
| 356 | 51.4 | 40 | 3d | 2024-10-17 | 2024-10-21 |  |  |
| 357 | 51.5 | 60 | 21d | 2024-11-04 | 2024-12-02 | 355 | waiting |
| 358 | 51.6 | 70 | 14d | 2024-12-03 | 2024-12-20 | 357 | waiting |
